# My Apartments Booking

How a schedule from MS Project changed from version to version. A marks actual dates.

## Version 1 (saved 2015-03-10)

| ID | WBS | Task | Duration | Start | Finish | Predecessors | Complete | Total float | Constraint |
| --- | --- | --- | --- | --- | --- | --- | --- | --- | --- |
| 1 | 1 | **Phase 1** | 42.5d? | 2014-08-28 A | 2014-12-17 |  | 91% | 44.25d |  |
| 2 | 1.1 | **Scope** | 1.25d | 2014-08-28 A | 2014-08-31 A |  | 100% |  |  |
| 3 |  | Determine project scope | 10h | 2014-08-28 A | 2014-08-31 A |  | 100% |  |  |
| 4 | 1.2 | **Analysis/Software Requirements** | 11.5d | 2014-08-31 A | 2014-10-17 A |  | 100% |  |  |
| 5 |  | Requirements Elicitation | 20h | 2014-08-31 A | 2014-09-07 A | 3 | 100% |  |  |
| 6 |  | Draft software specifications | 20h | 2014-09-13 A | 2014-09-20 A | 5 | 100% |  |  |
| 7 |  | Review software specifications with team | 2h | 2014-09-20 A | 2014-09-20 A | 6 | 100% |  |  |
| 8 |  | Prepare software requirement specifications V1.1 | 12h | 2014-09-22 A | 2014-10-01 A | 7 | 100% |  |  |
| 9 |  | Review software Requirement specifications V1.1 with team | 2h | 2014-10-02 A | 2014-10-03 A | 8 | 100% |  |  |
| 10 |  | Prepare software requirement specifications V1.2 | 9.5h | 2014-09-28 A | 2014-10-12 A | 9 | 100% |  |  |
| 11 |  | Review software requirement specifications V1.2 with team | 2h | 2014-10-12 A | 2014-10-12 A | 10 | 100% |  |  |
| 12 |  | Prepare software requirement specifications V1.3 | 2h | 2014-10-14 A | 2014-10-16 A | 11 | 100% |  | finish no earlier than 2014-10-16 |
| 13 |  | Approve software Requirement specifications V1.3 | 2h | 2014-10-16 A | 2014-10-17 A | 12 | 100% |  | finish no earlier than 2014-10-16 |
| 14 | 1.3 | **Design** | 24.25d? | 2014-10-20 A | 2014-12-11 A |  | 100% |  |  |
| 15 |  | Prepare Functional specifications V1.0 | 10h? | 2014-10-20 A | 2014-10-22 A |  | 100% |  | finish no earlier than 2014-10-22 |
| 16 |  | Review Functional specifications V1.0 with Team | 3h | 2014-10-23 A | 2014-10-23 A | 15 | 100% |  | start no earlier than 2014-10-23 |
| 17 |  | Prepare Functional specifications V1.1 | 47h | 2014-10-24 A | 2014-10-29 A | 16 | 100% |  | start no earlier than 2014-10-24 |
| 18 |  | Review Functional specifications V1.1 with Team | 2h? | 2014-10-30 A | 2014-10-30 A | 17 | 100% |  | start no earlier than 2014-10-30 |
| 19 |  | Prepare Functional specifications V1.2 | 24h? | 2014-10-31 A | 2014-11-05 A | 18 | 100% |  | finish no earlier than 2014-11-05 |
| 20 |  | Review Functional specifications V1.2 with Team | 3h | 2014-11-06 A | 2014-11-06 A | 19 | 100% |  | finish no earlier than 2014-11-06 |
| 21 |  | Prepare Functional specifications V1.3 | 46h? | 2014-11-07 A | 2014-11-19 A | 20 | 100% |  | start no earlier than 2014-11-07 |
| 22 |  | Review Functional specifications V1.3 with Team | 3h | 2014-11-20 A | 2014-11-20 A | 21 | 100% |  | finish no earlier than 2014-11-20 |
| 23 |  | Obtain approval to proceed | 1h | 2014-11-20 A | 2014-11-20 A | 22 | 100% |  | start no earlier than 2014-11-20 |
| 24 |  | Incorporate feedback into functional specifications | 30h? | 2014-11-21 A | 2014-11-26 A | 23 | 100% |  | start no earlier than 2014-11-21 |
| 25 |  | Obtain approval to proceed | 1h? | 2014-11-27 A | 2014-11-27 A | 24 | 100% |  | finish no earlier than 2014-11-27 |
| 26 |  | Risk Management Plan | 22h? | 2014-11-28 A | 2014-12-04 A |  | 100% |  | finish no earlier than 2014-12-04 |
| 27 |  | Quality Assurance Plan | 30h? | 2014-12-05 A | 2014-12-11 A |  | 100% |  | finish no earlier than 2014-12-11 |
| 28 |  | Other Changes | 30h? | 2014-12-12 | 2014-12-17 |  |  | 44.25d | start no earlier than 2014-12-12 |
| 29 | 2 | **Phase 2** | 28.38d | 2015-02-24 A | 2015-05-22 |  | 15% |  |  |
| 30 | 2.1 | **Admin Side** | 18d | 2015-02-24 A | 2015-04-28 |  | 19% | 6.5d |  |
| 31 |  | Login Page | 16h | 2015-02-24 A | 2015-02-26 A |  | 100% |  | finish no earlier than 2015-02-28 |
| 32 |  | Vendor Request | 12h | 2015-02-28 A | 2015-03-01 A |  | 100% |  | start no earlier than 2015-02-28 |
| 33 | 2.1.3 | **Admin Management** | 10d | 2015-03-02 A | 2015-03-29 |  | 44% |  |  |
| 34 |  | Users | 24h | 2015-03-02 A | 2015-03-04 A |  | 100% |  | start no earlier than 2015-03-02 |
| 35 |  | User Groups | 16h | 2015-03-02 A | 2015-03-03 A |  | 100% |  | start no earlier than 2015-03-02 |
| 36 |  | User Property | 24h | 2015-03-05 A | 2015-03-08 A |  | 100% |  | start no earlier than 2015-03-05 |
| 37 |  | Vendor Request | 16h? | 2015-03-03 A | 2015-03-10 A |  | 100% |  | finish no earlier than 2015-03-10 |
| 38 |  | Email Templates | 12h? | 2015-03-14 | 2015-03-17 |  |  | 18.5d | finish no earlier than 2015-03-17 |
| 39 |  | Application Errors | 24h? | 2015-03-14 | 2015-03-22 |  |  | 17d | start no earlier than 2015-03-14 |
| 40 |  | Set Banner | 16h? | 2015-03-17 | 2015-03-22 |  |  | 16.5d | start no earlier than 2015-03-17 |
| 41 |  | Website CMS | 16h? | 2015-03-21 | 2015-03-27 |  |  | 16d | start no earlier than 2015-03-21 |
| 42 |  | Website Links | 16h? | 2015-03-17 | 2015-03-22 |  |  | 16.5d | start no earlier than 2015-03-17 |
| 43 |  | Posted Reviews & Comments | 16h? | 2015-03-24 | 2015-03-29 |  |  | 14.5d | start no earlier than 2015-03-24 |
| 44 | 2.1.4 | **Property Setting** | 5.75d | 2015-03-24 | 2015-04-05 |  |  |  |  |
| 45 |  | City Managment | 14h? | 2015-03-24 | 2015-03-29 |  |  | 14.75d | start no earlier than 2015-03-24 |
| 46 |  | Town Management | 12h? | 2015-03-24 | 2015-03-29 |  |  | 15d | start no earlier than 2015-03-24 |
| 47 |  | Facility Management | 14h? | 2015-03-24 | 2015-03-29 |  |  | 14.75d | start no earlier than 2015-03-24 |
| 48 |  | Facility Profile | 16h? | 2015-03-31 | 2015-04-05 |  |  | 12.5d | start no earlier than 2015-03-30 |
| 49 |  | Policy Profile | 12h? | 2015-03-31 | 2015-04-05 |  |  | 13d | start no earlier than 2015-03-31 |
| 50 |  | Property Categories | 15h? | 2015-03-31 | 2015-04-05 |  |  | 12.62d | start no earlier than 2015-03-31 |
| 51 |  | Base Comission | 14h? | 2015-03-31 | 2015-04-05 |  |  | 12.75d | start no earlier than 2015-03-31 |
| 52 | 2.1.5 | **Property Managment** | 5.75d | 2015-04-07 | 2015-04-21 |  |  |  |  |
| 53 |  | Property List | 16h? | 2015-04-07 | 2015-04-12 |  |  | 10.5d | start no earlier than 2015-04-07 |
| 54 |  | Property Facilities | 16h? | 2015-04-07 | 2015-04-12 |  |  |  |  |
| 55 |  | Property Policy | 16h? | 2015-04-07 | 2015-04-12 |  |  | 2d |  |
| 56 |  | Property Graphics | 24h? | 2015-04-07 | 2015-04-18 |  |  | 1d |  |
| 57 |  | Property Promotions | 16h? | 2015-04-14 | 2015-04-16 |  |  |  | start no earlier than 2015-04-14 |
| 58 |  | Featured Property | 16h? | 2015-04-14 | 2015-04-16 |  |  |  | start no earlier than 2015-04-14 |
| 59 |  | Property of Month | 16h? | 2015-04-15 | 2015-04-16 |  |  |  | start no earlier than 2015-04-15 |
| 60 |  | Property Comission | 8h? | 2015-04-18 | 2015-04-18 |  |  |  | start no earlier than 2015-04-18 |
| 61 |  | Property Calender | 8h? | 2015-04-19 | 2015-04-21 |  |  |  | start no earlier than 2015-04-19 |
| 62 |  | Property Approved/UnApproved List | 15h? | 2015-04-18 | 2015-04-21 |  |  |  | start no earlier than 2015-04-18 |
| 63 | 2.1.6 | **Reports** | 2.12d | 2015-04-18 | 2015-04-23 |  |  |  |  |
| 64 |  | Booking Income Report | 14h? | 2015-04-18 | 2015-04-19 |  |  |  | start no earlier than 2015-04-18 |
| 65 |  | Vendor Property List Report | 17h? | 2015-04-21 | 2015-04-23 |  |  |  | start no earlier than 2015-04-21 |
| 66 |  | Booking Comission Report | 17h? | 2015-04-21 | 2015-04-23 |  |  |  | start no earlier than 2015-04-21 |
| 67 | 2.1.7 | **Property Booking** | 3.5d | 2015-04-23 | 2015-04-28 |  |  |  |  |
| 68 |  | Booking History | 12h? | 2015-04-23 | 2015-04-26 |  |  | 0.25d |  |
| 69 |  | Search booking | 12h? | 2015-04-23 | 2015-04-26 |  |  | 0.25d |  |
| 70 |  | Change Booking | 12h? | 2015-04-23 | 2015-04-26 |  |  | 0.25d |  |

| ID | WBS | Task | Duration | Start | Finish | Total float | Constraint |
| --- | --- | --- | --- | --- | --- | --- | --- |
| 71 |  | Create Booking | 12h? | 2015-04-23 | 2015-04-26 | 0.25d |  |
| 72 |  | Update Customer details | 9h? | 2015-04-28 | 2015-04-28 |  | start no earlier than 2015-04-28 |
| 73 | 2.2 | **Client Side** | 4.75d | 2015-04-30 | 2015-05-09 |  |  |
| 74 | 2.2.1 | **Home Page** | 22h | 2015-04-30 | 2015-05-02 |  |  |
| 75 |  | Search Apartment + Hot Deals | 22h? | 2015-04-30 | 2015-05-02 |  | start no earlier than 2015-04-30 |
| 76 | 2.2.2 | **Apartment Full List Page** | 28h | 2015-04-30 | 2015-05-03 |  |  |
| 77 |  | Booking & Payment | 28h? | 2015-04-30 | 2015-05-03 |  | start no earlier than 2015-04-30 |
| 78 |  | My Bookings | 12h? | 2015-04-30 | 2015-05-03 | 1.5d |  |
| 79 |  | Viewed Apartments | 12h? | 2015-04-30 | 2015-05-03 | 1.5d |  |
| 80 |  | Map | 10h? | 2015-05-05 | 2015-05-09 | 3.25d | start no earlier than 2015-05-05 |
| 81 |  | Email Enquiry | 10h? | 2015-05-05 | 2015-05-09 | 3.25d | start no earlier than 2015-05-05 |
| 82 |  | FAQ'S | 8h? | 2015-05-05 | 2015-05-09 | 3.5d | start no earlier than 2015-05-05 |
| 83 |  | Contact US | 8h? | 2015-05-05 | 2015-05-09 | 3.5d | start no earlier than 2015-05-05 |
| 84 | 2.3 | **Testing** | 2.12d | 2015-05-10 | 2015-05-16 |  |  |
| 85 |  | Application Testing | 2.12d | 2015-05-10 | 2015-05-16 |  |  |
| 86 | 2.4 | **Bug Fixing** | 4d | 2015-05-12 | 2015-05-21 |  |  |
| 87 |  | Application Issue Fixing | 4d | 2015-05-12 | 2015-05-21 |  |  |
| 88 |  | Other Changes | 3d? | 2015-05-10 | 2015-05-21 | 0.25d | finish no earlier than 2015-05-21 |

## Version 2 (saved 2015-03-13)

Last finish stays 2015-05-22. Complete tasks 29 → 30.

Changed:

| ID | Task | Start | Finish | Complete | Total float |
| --- | --- | --- | --- | --- | --- |
| 1 | **Phase 1** |  | 2014-12-17 A | 91% → 100% | 44.25d → none |
| 28 | Other Changes | 2014-12-12 A | 2014-12-17 A | 0% → 100% | 44.25d → none |
